# projeto controle de livraria

Schedule from MS Project, 2020-06-04 to 2020-07-03, costs in R$.

## Calendars

- Padrão: Mon-Fri 09:00-12:00, 13:00-18:00; Sat-Sun off.

## Resources

| Resource | Rate |
| --- | --- |
| Breno | 150 |
| Lucas | 150 |
| Cliente |  |
| Douglas | 150 |

## Schedule

| ID | WBS | Task | Type | Duration | Start | Finish | Predecessors | Total slack | Free slack | Constraint | Resources | Work | Cost |
| --- | --- | --- | --- | --- | --- | --- | --- | --- | --- | --- | --- | --- | --- |
| 1 | 1 | **Projeto Controle de Livraria** |  | 21.7d | 2020-06-04 09:00 | 2020-07-03 15:35 |  | 0d |  |  |  | 424.83h | 59,225 |
| 2 | 1.1 | **Prospecçâo** |  | 2.81d | 2020-06-04 09:00 | 2020-06-08 16:30 |  | 0d |  |  |  | 25h | 3,750 |
| 3 | 1.1.1 | **PTEC** |  | 1.56d | 2020-06-04 09:00 | 2020-06-05 14:30 |  | 0d |  |  |  | 14h | 2,100 |
| 4 | 1.1.1.1 | Estudar domínio de aplicação |  | 0.38d | 2020-06-04 09:00 | 2020-06-04 12:00 |  | 0d |  |  | Breno | 3h | 450 |
| 5 | 1.1.1.2 | Reunir-se com fornecedor de requisitos |  | 0.38d | 2020-06-04 13:00 | 2020-06-04 16:00 | 4 | 0d |  |  | Breno | 3h | 450 |
| 6 | 1.1.1.3 | Redigir PTEC |  | 0.62d | 2020-06-04 16:00 | 2020-06-05 12:00 | 5 | 0d |  |  | Breno | 5h | 750 |
| 7 | 1.1.1.4 | Revisar proposta técnica |  | 0.19d | 2020-06-05 13:00 | 2020-06-05 14:30 | 6 | 0d |  |  | Lucas; Douglas | 3h | 450 |
| 8 | 1.1.1.5 | Aprovar PTEC | milestone | 0d | 2020-06-05 14:30 | 2020-06-05 14:30 | 7 | 1.25d |  |  | Cliente |  |  |
| 9 | 1.1.2 | **Estimativa de tamanho preliminar** |  | 0.69d | 2020-06-05 14:30 | 2020-06-08 11:00 |  | 0d |  |  |  | 6h | 900 |
| 10 | 1.1.2.1 | Estimar tamanho do projeto |  | 0.62d | 2020-06-05 14:30 | 2020-06-08 10:30 | 7 | 0d |  |  | Douglas | 5h | 750 |
| 11 | 1.1.2.2 | Revisar estimativa do tamanho do projeto |  | 0.06d | 2020-06-08 10:30 | 2020-06-08 11:00 | 10 | 0d |  |  | Breno; Lucas | 1h | 150 |
| 12 | 1.1.3 | **Estimativa preliminar de cronograma e orçcamento** |  | 0.56d | 2020-06-08 11:00 | 2020-06-08 16:30 |  | 0d |  |  |  | 5h | 750 |
| 13 | 1.1.3.1 | Elaborar cronograma e orçamento preliminares |  | 0.5d | 2020-06-08 11:00 | 2020-06-08 16:00 | 9 | 0d |  |  | Douglas | 4h | 600 |
| 14 | 1.1.3.2 | Revisar cronograma e orçamento preliminares |  | 0.06d | 2020-06-08 16:00 | 2020-06-08 16:30 | 13 | 0d |  |  | Lucas; Breno | 1h | 150 |
| 15 | 1.2 | **Análise** |  | 3.88d | 2020-06-08 16:30 | 2020-06-12 15:30 | 2 | 0d |  |  |  | 64h | 9,600 |
| 16 | 1.2.1 | **Documento de requisitos** |  | 3.88d | 2020-06-08 16:30 | 2020-06-12 15:30 |  | 0d |  |  |  | 34h | 5,100 |
| 17 | 1.2.1.1 | Reunir-se com o cliente |  | 0.38d | 2020-06-08 16:30 | 2020-06-09 10:30 |  | 0d |  |  | Breno; Douglas | 6h | 900 |
| 18 | 1.2.1.2 | Elaborar documento de requisitos |  | 1.25d | 2020-06-09 10:30 | 2020-06-10 13:30 | 17 | 0d |  |  | Breno; Douglas | 20h | 3,000 |
| 19 | 1.2.1.3 | Revisar documento de requisitos |  | 1d | 2020-06-11 15:30 | 2020-06-12 15:30 | 18 | 0d |  |  | Lucas | 8h | 1,200 |
| 20 | 1.2.1.4 | Aprovar documento de requisitos | milestone | 0d | 2020-06-12 15:30 | 2020-06-12 15:30 | 19 | 0d |  |  | Cliente |  |  |
| 21 | 1.2.2 | **MRB** |  | 3.12d | 2020-06-09 10:30 | 2020-06-12 11:30 |  | 0.38d |  |  |  | 30h | 4,500 |
| 22 | 1.2.2.1 | Elaborar MRB |  | 2.5d | 2020-06-09 10:30 | 2020-06-11 15:30 | 17 | 0.38d | 0d |  | Lucas | 20h | 3,000 |
| 23 | 1.2.2.2 | Revisar MRB |  | 0.62d | 2020-06-11 15:30 | 2020-06-12 11:30 | 22 | 0.38d |  | start no later than 2020-06-22 09:00 | Douglas; Breno | 10h | 1,500 |
| 24 | 1.3 | **Projeto** |  | 1.34d | 2020-06-12 15:30 | 2020-06-16 09:15 | 15 | 0d |  |  |  | 23.5h | 3,525 |
| 25 | 1.3.1 | **Diagramas de classes** |  | 1.28d | 2020-06-12 15:30 | 2020-06-15 17:45 |  | 0.06d |  |  |  | 17h | 2,550 |
| 26 | 1.3.1.1 | Elaborar Diagrama de classes |  | 1d | 2020-06-12 15:30 | 2020-06-15 17:00 | 15 | 0.06d | 0d |  | Breno; Lucas | 13h | 1,950 |
| 27 | 1.3.1.2 | Revisar Diagrama de classes |  | 0.09d | 2020-06-15 17:00 | 2020-06-15 17:45 | 26 | 0.06d |  |  | Lucas; Douglas | 1.5h | 225 |
| 28 | 1.3.1.3 | Atualizar MRB |  | 0.31d | 2020-06-12 15:30 | 2020-06-12 18:00 | 21 | 1.03d |  | start no later than 2020-06-22 09:00 | Douglas | 2.5h | 375 |

| ID | WBS | Task | Type | Duration | Start | Finish | Predecessors | Total slack | Free slack | Constraint | Resources | Work | Cost |
| --- | --- | --- | --- | --- | --- | --- | --- | --- | --- | --- | --- | --- | --- |
| 29 | 1.3.2 | **Modelo de entidade relacional** |  | 1.34d | 2020-06-12 15:30 | 2020-06-16 09:15 |  | 0d |  |  |  | 6.5h | 975 |
| 30 | 1.3.2.1 | Elaborar MER |  | 0.75d | 2020-06-12 15:30 | 2020-06-15 13:30 | 15 | 0d |  |  | Douglas | 6h | 900 |
| 31 | 1.3.2.2 | Revisar MER |  | 0.06d | 2020-06-15 17:45 | 2020-06-16 09:15 | 30 | 0d |  | start no later than 2020-06-23 09:00 | Lucas | 0.5h | 75 |
| 32 | 1.4 | **Planejamento** |  | 2.5d | 2020-06-16 09:15 | 2020-06-18 14:15 | 24 | 0d |  |  |  | 21h | 3,150 |
| 33 | 1.4.1 | Divisão dos times de desenvolvimento |  | 0.5d | 2020-06-18 09:15 | 2020-06-18 14:15 | 24 | 0d |  |  | Breno | 4h | 600 |
| 34 | 1.4.2 | Definir linguagem/frameworks a serem utilizados |  | 0.5d | 2020-06-16 09:15 | 2020-06-16 14:15 | 24 | 0.88d | 0d | start no later than 2020-06-23 09:00 | Breno; Douglas | 8h | 1,200 |
| 35 | 1.4.3 | **Definir padrão de interface e usabilidade** |  | 1d | 2020-06-16 14:15 | 2020-06-17 14:15 |  | 0.88d |  |  |  | 8h | 1,200 |
| 36 | 1.4.3.1 | Montar Mockup de interface |  | 0.75d | 2020-06-16 14:15 | 2020-06-17 11:15 | 34 | 0.88d | 0d |  | Breno | 6h | 900 |
| 37 | 1.4.3.2 | Reunir-se com o cliente |  | 0.25d | 2020-06-17 11:15 | 2020-06-17 14:15 | 36 | 0.88d | 0d |  | Breno | 2h | 300 |
| 38 | 1.4.3.3 | Aprovar Interface | milestone | 0d | 2020-06-17 14:15 | 2020-06-17 14:15 | 37 | 0.88d | 0d |  | Cliente |  |  |
| 39 | 1.4.4 | Iniciar repositório para controle de versionamento |  | 0.12d | 2020-06-17 14:15 | 2020-06-17 15:15 | 38 | 0.88d |  |  | Breno | 1h | 150 |
| 40 | 1.5 | **Desenvolvimento** |  | 11.17d | 2020-06-18 14:15 | 2020-07-03 15:35 | 32 | 0d |  |  |  | 233.33h | 35,000 |
| 41 | 1.5.1 | **Release 00** |  | 8.25d | 2020-06-18 14:15 | 2020-06-30 16:15 |  | 0d |  |  |  | 180h | 27,000 |
| 42 | 1.5.1.1 | **Implementação** |  | 7.12d | 2020-06-18 14:15 | 2020-06-29 15:15 |  | 0.22d |  |  |  | 133h | 19,950 |
| 43 | 1.5.1.1.1 | Implementar [RFS01] |  | 1.25d | 2020-06-19 10:15 | 2020-06-22 13:15 | 32 | 0d |  |  | Breno | 10h | 1,500 |
| 44 | 1.5.1.1.2 | Implementar [RFS02] |  | 0.75d | 2020-06-23 17:15 | 2020-06-24 15:15 | 43 | 0.34d | 0d |  | Breno | 6h | 900 |
| 45 | 1.5.1.1.3 | Implementar [RFS03] |  | 0.62d | 2020-06-24 15:15 | 2020-06-25 11:15 | 43 | 0.72d | 0d |  | Breno | 5h | 750 |
| 46 | 1.5.1.1.4 | Implementar [RFS04] |  | 0.5d | 2020-06-25 11:15 | 2020-06-25 16:15 | 43 | 1.22d | 0d |  | Breno | 4h | 600 |
| 47 | 1.5.1.1.5 | Implementar [RFS05] |  | 1.25d | 2020-06-18 14:15 | 2020-06-19 16:15 | 32 | 0.22d | 0d |  | Douglas | 10h | 1,500 |
| 48 | 1.5.1.1.6 | Implementar [RFS06] |  | 0.62d | 2020-06-23 15:15 | 2020-06-24 11:15 | 47 | 2.72d | 0d |  | Douglas | 5h | 750 |
| 49 | 1.5.1.1.7 | Implementar [RFS07] |  | 0.62d | 2020-06-24 11:15 | 2020-06-24 17:15 | 47 | 2.09d | 0d |  | Douglas | 5h | 750 |
| 50 | 1.5.1.1.8 | Implementar [RFS08] |  | 0.5d | 2020-06-24 17:15 | 2020-06-25 13:15 | 47 | 2.12d | 0d |  | Douglas | 4h | 600 |
| 51 | 1.5.1.1.9 | Implementar [RFS09] |  | 1.25d | 2020-06-18 14:15 | 2020-06-19 16:15 | 32 | 0.22d | 0d |  | Lucas | 10h | 1,500 |
| 52 | 1.5.1.1.10 | Implementar [RFS10] |  | 0.75d | 2020-06-19 16:15 | 2020-06-24 10:15 | 51 | 2.84d | 0d |  | Lucas | 6h | 900 |
| 53 | 1.5.1.1.11 | Implementar [RFS11] |  | 0.62d | 2020-06-24 10:15 | 2020-06-24 16:15 | 51 | 2.62d | 0d |  | Lucas | 5h | 750 |
| 54 | 1.5.1.1.12 | Implementar [RFS12] |  | 0.5d | 2020-06-24 16:15 | 2020-06-25 11:15 | 51 | 2.38d | 0d |  | Lucas | 4h | 600 |
| 55 | 1.5.1.1.13 | Implementar [RFS13] |  | 1.25d | 2020-06-22 13:15 | 2020-06-23 15:15 | 43 | 0.22d | 0d |  | Lucas | 10h | 1,500 |
| 56 | 1.5.1.1.14 | Implementar [RFS14] |  | 0.62d | 2020-06-25 11:15 | 2020-06-25 17:15 | 55 | 0.09d | 0d |  | Lucas | 5h | 750 |
| 57 | 1.5.1.1.15 | Implementar [RFS15] |  | 0.62d | 2020-06-25 17:15 | 2020-06-26 14:15 | 55 | 0.47d |  |  | Lucas | 5h | 750 |
| 58 | 1.5.1.1.16 | Implementar [RFS16] |  | 0.5d | 2020-06-26 14:15 | 2020-06-29 09:15 | 55 | 0.38d | 0d |  | Lucas | 4h | 600 |
| 59 | 1.5.1.1.17 | Implementar [RFS17] |  | 1.5d | 2020-06-22 13:15 | 2020-06-23 17:15 | 43, 51 | 0d |  |  | Breno | 12h | 1,800 |
| 60 | 1.5.1.1.18 | Implementar [RFS18] |  | 1d | 2020-06-22 15:15 | 2020-06-23 15:15 | 43 | 0.88d | 0d |  | Douglas | 8h | 1,200 |
| 61 | 1.5.1.1.19 | Implementar [RNF01] |  | 0.88d | 2020-06-19 16:15 | 2020-06-22 15:15 | 47, 51 | 4.78d | 4.38d |  | Douglas | 7h | 1,050 |
| 62 | 1.5.1.1.20 | Implementar [RNF02] |  | 0.62d | 2020-06-29 09:15 | 2020-06-29 15:15 | 43, 44, 45, 46, 47, 48, 49, 50, 51, 52, 53, 54, 55, 56, 57, 58, 59, 60, 61, 63 | 0.62d | 0d |  | Douglas | 5h | 750 |
| 63 | 1.5.1.1.21 | Implementar [RNF03] |  | 0.38d | 2020-06-23 15:15 | 2020-06-24 09:15 | 51 | 2.97d | 0d |  | Lucas | 3h | 450 |

| ID | WBS | Task | Type | Duration | Start | Finish | Predecessors | Total slack | Constraint | Resources | Work | Cost |
| --- | --- | --- | --- | --- | --- | --- | --- | --- | --- | --- | --- | --- |
| 64 | 1.5.1.2 | **Teste** |  | 3.38d | 2020-06-25 13:15 | 2020-06-30 16:15 |  | 0d |  |  | 47h | 7,050 |
| 65 | 1.5.1.2.1 | Testar [RFS01] |  | 0.25d | 2020-06-29 09:15 | 2020-06-29 11:15 | 43 | 1.5d |  | Lucas | 2h | 300 |
| 66 | 1.5.1.2.2 | Testar [RFS02] |  | 0.25d | 2020-06-30 11:15 | 2020-06-30 14:15 | 44 | 0.25d |  | Lucas | 2h | 300 |
| 67 | 1.5.1.2.3 | Testar [RFS03] |  | 0.25d | 2020-06-29 14:15 | 2020-06-30 11:15 | 45 | 0.5d |  | Lucas | 2h | 300 |
| 68 | 1.5.1.2.4 | Testar [RFS04] |  | 0.25d | 2020-06-29 11:15 | 2020-06-29 14:15 | 46 | 1.25d |  | Lucas | 2h | 300 |
| 69 | 1.5.1.2.5 | Testar [RFS05] |  | 0.25d | 2020-06-25 16:15 | 2020-06-26 09:15 | 47 | 2.75d |  | Breno | 2h | 300 |
| 70 | 1.5.1.2.6 | Testar [RFS06] |  | 0.25d | 2020-06-26 15:15 | 2020-06-26 17:15 | 48 | 1.88d |  | Breno | 2h | 300 |
| 71 | 1.5.1.2.7 | Testar [RFS07] |  | 0.25d | 2020-06-26 17:15 | 2020-06-29 10:15 | 49 | 1.62d |  | Breno | 2h | 300 |
| 72 | 1.5.1.2.8 | Testar [RFS08] |  | 0.25d | 2020-06-26 13:15 | 2020-06-26 15:15 | 50 | 2.12d |  | Breno | 2h | 300 |
| 73 | 1.5.1.2.9 | Testar [RFS09] |  | 0.25d | 2020-06-25 13:15 | 2020-06-25 15:15 | 51 | 3.12d |  | Douglas | 2h | 300 |
| 74 | 1.5.1.2.10 | Testar [RFS10] |  | 0.25d | 2020-06-26 10:15 | 2020-06-26 13:15 | 52 | 2.38d |  | Douglas | 2h | 300 |
| 75 | 1.5.1.2.11 | Testar [RFS11] |  | 0.25d | 2020-06-25 17:15 | 2020-06-26 10:15 | 53 | 2.62d |  | Douglas | 2h | 300 |
| 76 | 1.5.1.2.12 | Testar [RFS12] |  | 0.25d | 2020-06-25 15:15 | 2020-06-25 17:15 | 54 | 2.88d |  | Douglas | 2h | 300 |
| 77 | 1.5.1.2.13 | Testar [RFS13] |  | 0.25d | 2020-06-29 17:15 | 2020-06-30 10:15 | 55 | 0.62d |  | Breno | 2h | 300 |
| 78 | 1.5.1.2.14 | Testar [RFS14] |  | 0.25d | 2020-06-30 13:15 | 2020-06-30 15:15 | 56 | 0.12d |  | Breno | 2h | 300 |
| 79 | 1.5.1.2.15 | Testar [RFS15] |  | 0.25d | 2020-06-29 09:00 | 2020-06-30 16:00 | 57 | 0.03d |  | Breno | 2h | 300 |
| 80 | 1.5.1.2.16 | Testar [RFS16] |  | 0.25d | 2020-06-30 10:15 | 2020-06-30 13:15 | 58 | 0.38d |  | Breno | 2h | 300 |
| 81 | 1.5.1.2.17 | Testar [RFS17] |  | 0.25d | 2020-06-30 14:15 | 2020-06-30 16:15 | 59 | 0d |  | Lucas | 2h | 300 |
| 82 | 1.5.1.2.18 | Testar [RFS18] |  | 0.25d | 2020-06-29 15:15 | 2020-06-29 17:15 | 60 | 0.88d |  | Breno | 2h | 300 |
| 83 | 1.5.1.2.19 | Testar [RNF01] |  | 0.5d | 2020-06-29 10:15 | 2020-06-30 14:00 | 61 | 0.28d | finish no earlier than 2020-06-30 14:00 | Douglas | 4h | 600 |
| 84 | 1.5.1.2.20 | Testar [RNS02] |  | 0.5d | 2020-06-29 15:15 | 2020-06-30 10:15 | 62 | 0.62d |  | Lucas | 4h | 600 |
| 85 | 1.5.1.2.21 | Testar [RNF03] |  | 0.38d | 2020-06-26 09:15 | 2020-06-26 13:15 | 63 | 2.38d |  | Breno | 3h | 450 |
| 86 | 1.5.2 | Avaliação do cliente | milestone | 0d | 2020-06-30 16:15 | 2020-06-30 16:15 | 64 | 0d |  | Cliente |  |  |
| 87 | 1.5.3 | Redigir relatório de não-conformidade |  | 1.05d | 2020-06-30 16:15 | 2020-07-03 15:35 | 86 | 0d |  | Breno; Lucas; Douglas | 10h | 1,500 |

| ID | WBS | Task | Duration | Start | Finish | Predecessors | Total slack | Free slack | Constraint | Resources | Work | Cost |
| --- | --- | --- | --- | --- | --- | --- | --- | --- | --- | --- | --- | --- |
| 88 | 1.5.4 | **Release 01** | 2.92d | 2020-06-30 16:15 | 2020-07-03 15:35 |  | 0d |  |  |  | 43.33h | 6,500 |
| 89 | 1.5.4.1 | **Implementação** | 2.08d | 2020-06-30 16:15 | 2020-07-02 16:55 |  | 0d |  |  |  | 33.33h | 5,000 |
| 90 | 1.5.4.1.1 | Correção de bugs de acordo com o relatório de não conformidade da Release 00 | 2.08d | 2020-06-30 16:15 | 2020-07-02 16:55 | 41 | 0d |  |  | Lucas; Douglas | 33.33h | 5,000 |
| 91 | 1.5.4.2 | **Teste** | 0.83d | 2020-07-02 16:55 | 2020-07-03 15:35 |  | 0d |  |  |  | 10h | 1,500 |
| 92 | 1.5.4.2.1 | Validação da correção dos bugs | 0.83d | 2020-07-02 16:55 | 2020-07-03 15:35 | 90 | 0d |  |  | Breno; Lucas; Douglas | 10h | 1,500 |
| 93 | 1.6 | **Monitoramento e controle** | 3.12d | 2020-06-16 09:15 | 2020-06-19 10:15 | 2, 15, 24 | 4.54d | 0d |  |  | 28h | 4,200 |
| 94 | 1.6.1 | Acompanhamento do projeto | 0.75d | 2020-06-16 14:15 | 2020-06-18 09:15 |  | 4.47d |  | start no later than 2020-06-23 09:00 | Breno; Douglas | 6h | 900 |
| 95 | 1.6.2 | Atualizações de bibliotecas utilizadas e protocolos | 0.88d | 2020-06-16 09:15 | 2020-06-16 17:15 |  | 6.79d |  |  | Lucas | 7h | 1,050 |
| 96 | 1.6.3 | Elucidar requisitos demandados pelo cliente em relases | 0.62d | 2020-06-18 14:15 | 2020-06-19 10:15 |  | 4.54d |  |  | Breno | 5h | 750 |
| 97 | 1.6.4 | Refatoração de código | 1.25d | 2020-06-16 17:15 | 2020-06-18 10:15 |  | 5.54d |  |  | Douglas | 10h | 1,500 |
| 98 | 1.7 | Fechamento | 2d | 2020-06-19 10:15 | 2020-06-23 10:15 | 93 | 4.54d | 0d |  |  | 10h |  |
| 99 | 1.8 | Controle de mudanças | 4d | 2020-06-23 10:15 | 2020-06-29 10:15 | 98 | 4.54d |  |  |  | 20h |  |
