# projeto controle de livraria

Schedule from MS Project, 2020-06-04 to 2020-07-03, costs in R$, A marks actual dates.

## Calendars

- Padrão: Mon-Fri 09:00-12:00, 13:00-18:00; Sat-Sun off.

## Resources

| Resource | Rate |
| --- | --- |
| Breno | 150 |
| Lucas | 150 |
| Cliente |  |
| Douglas | 150 |

## Schedule

| ID | WBS | Task | Duration | Start | Finish | Predecessors | Complete | Remaining | Total slack | Free slack | Constraint | Resources | Work | Actual work | Cost | Actual cost |
| --- | --- | --- | --- | --- | --- | --- | --- | --- | --- | --- | --- | --- | --- | --- | --- | --- |
| 1 | 1 | **Projeto Controle de Livraria** | 21.7d | 2020-06-04 09:00 A | 2020-07-03 15:35 |  | 60% | 8.61d | 0d |  |  |  | 435.13h | 264.8h | 60,575 | 39,525 |
| 2 | 1.1 | **Prospecçâo** | 2.81d | 2020-06-04 09:00 A | 2020-06-08 16:30 |  | 90% | 0.27d | 9.93d | 0d |  |  | 35h | 32h | 5,100 | 4,650 |
| 3 | 1.1.1 | **PTEC** | 1.75d | 2020-06-04 09:00 A | 2020-06-05 16:00 |  | 86% | 0.25d | 11d |  |  |  | 24h | 21h | 3,450 | 3,000 |
| 4 | 1.1.1.1 | Estudar domínio de aplicação | 8h | 2020-06-04 09:00 A | 2020-06-04 18:00 A |  | 100% |  |  |  |  | Breno | 8h | 8h | 1,200 | 1,200 |
| 5 | 1.1.1.2 | Reunir-se com fornecedor de requisitos | 0.38d | 2020-06-05 09:00 | 2020-06-05 12:00 | 4 |  |  | 11.37d |  |  | Breno | 3h |  | 450 |  |
| 6 | 1.1.1.3 | Redigir PTEC | 0.75d | 2020-06-04 16:00 A | 2020-06-05 14:00 A | 5 | 100% |  |  |  |  | Breno | 6h | 6h | 900 | 900 |
| 7 | 1.1.1.4 | Revisar proposta técnica | 0.38d | 2020-06-05 13:00 A | 2020-06-05 16:00 A | 6 | 100% |  |  |  |  | Lucas; Douglas | 6h | 6h | 900 | 900 |
| 8 | 1.1.1.5 | Aprovar PTEC | 0.12d | 2020-06-05 14:30 A | 2020-06-05 15:30 A | 7 | 100% |  |  |  |  | Cliente | 1h | 1h |  |  |
| 9 | 1.1.2 | **Estimativa de tamanho preliminar** | 0.72d | 2020-06-05 14:30 A | 2020-06-08 11:15 A |  | 100% |  |  |  |  |  | 6h | 6h | 900 | 900 |
| 10 | 1.1.2.1 | Estimar tamanho do projeto | 0.62d | 2020-06-05 14:30 A | 2020-06-08 11:00 A | 7 | 100% |  |  |  |  | Douglas | 5h | 5h | 750 | 750 |
| 11 | 1.1.2.2 | Revisar estimativa do tamanho do projeto | 0.06d | 2020-06-08 10:30 A | 2020-06-08 11:15 A | 10 | 100% |  |  |  |  | Breno; Lucas | 1h | 1h | 150 | 150 |
| 12 | 1.1.3 | **Estimativa preliminar de cronograma e orçcamento** | 0.56d | 2020-06-08 11:00 A | 2020-06-08 16:30 A |  | 100% |  |  |  |  |  | 5h | 5h | 750 | 750 |
| 13 | 1.1.3.1 | Elaborar cronograma e orçamento preliminares | 0.5d | 2020-06-08 11:00 A | 2020-06-08 16:00 A | 9 | 100% |  |  |  |  | Douglas | 4h | 4h | 600 | 600 |
| 14 | 1.1.3.2 | Revisar cronograma e orçamento preliminares | 0.06d | 2020-06-08 16:00 A | 2020-06-08 16:30 A | 13 | 100% |  |  |  |  | Lucas; Breno | 1h | 1h | 150 | 150 |
| 15 | 1.2 | **Análise** | 3.91d | 2020-06-08 16:30 A | 2020-06-12 15:48 | 2 | 94% | 0.25d | 6.28d | 1.31d |  |  | 64.3h | 58.3h | 9,600 | 8,700 |
| 16 | 1.2.1 | **Documento de requisitos** | 3.91d | 2020-06-08 16:30 A | 2020-06-12 15:48 |  | 86% | 0.55d | 6.28d |  |  |  | 34.3h | 28.3h | 5,100 | 4,200 |
| 17 | 1.2.1.1 | Reunir-se com o cliente | 0.38d | 2020-06-08 16:30 | 2020-06-09 10:30 |  |  |  | 9.81d |  |  | Breno; Douglas | 6h |  | 900 |  |
| 18 | 1.2.1.2 | Elaborar documento de requisitos | 1.25d | 2020-06-09 10:30 A | 2020-06-10 13:30 A | 17 | 100% |  |  |  |  | Breno; Douglas | 20h | 20h | 3,000 | 3,000 |
| 19 | 1.2.1.3 | Revisar documento de requisitos | 1d | 2020-06-11 15:30 A | 2020-06-12 15:30 A | 18 | 100% |  |  |  |  | Lucas | 8h | 8h | 1,200 | 1,200 |
| 20 | 1.2.1.4 | Aprovar documento de requisitos | 0.04d | 2020-06-12 15:30 A | 2020-06-12 15:48 A | 19 | 100% |  |  |  |  | Cliente | 0.3h | 0.3h |  |  |
| 21 | 1.2.2 | **MRB** | 3.12d | 2020-06-09 10:30 A | 2020-06-12 11:30 A |  | 100% |  |  |  |  |  | 30h | 30h | 4,500 | 4,500 |
| 22 | 1.2.2.1 | Elaborar MRB | 2.5d | 2020-06-09 10:30 A | 2020-06-11 15:30 A | 17 | 100% |  |  |  |  | Lucas | 20h | 20h | 3,000 | 3,000 |
| 23 | 1.2.2.2 | Revisar MRB | 0.62d | 2020-06-11 15:30 A | 2020-06-12 11:30 A | 22 | 100% |  |  |  | start no later than 2020-06-22 09:00 | Douglas; Breno | 10h | 10h | 1,500 | 1,500 |
| 24 | 1.3 | **Projeto** | 1.34d | 2020-06-12 15:30 A | 2020-06-16 09:15 A | 15 | 100% |  |  |  |  |  | 23.5h | 23.5h | 3,525 | 3,525 |
| 25 | 1.3.1 | **Diagramas de classes** | 1.28d | 2020-06-12 15:30 A | 2020-06-15 17:45 A |  | 100% |  |  |  |  |  | 17h | 17h | 2,550 | 2,550 |
| 26 | 1.3.1.1 | Elaborar Diagrama de classes | 1d | 2020-06-12 15:30 A | 2020-06-15 17:00 A | 15 | 100% |  |  |  |  | Breno; Lucas | 13h | 13h | 1,950 | 1,950 |
| 27 | 1.3.1.2 | Revisar Diagrama de classes | 0.09d | 2020-06-15 17:00 A | 2020-06-15 17:45 A | 26 | 100% |  |  |  |  | Lucas; Douglas | 1.5h | 1.5h | 225 | 225 |
| 28 | 1.3.1.3 | Atualizar MRB | 0.31d | 2020-06-12 15:30 A | 2020-06-12 18:00 A | 21 | 100% |  |  |  | start no later than 2020-06-22 09:00 | Douglas | 2.5h | 2.5h | 375 | 375 |

| ID | WBS | Task | Type | Duration | Start | Finish | Predecessors | Complete | Remaining | Total slack | Constraint | Resources | Work | Actual work | Cost | Actual cost |
| --- | --- | --- | --- | --- | --- | --- | --- | --- | --- | --- | --- | --- | --- | --- | --- | --- |
| 29 | 1.3.2 | **Modelo de entidade relacional** |  | 1.34d | 2020-06-12 15:30 A | 2020-06-16 09:15 A |  | 100% |  |  |  |  | 6.5h | 6.5h | 975 | 975 |
| 30 | 1.3.2.1 | Elaborar MER |  | 0.75d | 2020-06-12 15:30 A | 2020-06-15 13:30 A | 15 | 100% |  |  |  | Douglas | 6h | 6h | 900 | 900 |
| 31 | 1.3.2.2 | Revisar MER |  | 0.06d | 2020-06-15 17:45 A | 2020-06-16 09:15 A | 30 | 100% |  |  | start no later than 2020-06-23 09:00 | Lucas | 0.5h | 0.5h | 75 | 75 |
| 32 | 1.4 | **Planejamento** |  | 2.5d | 2020-06-16 09:15 A | 2020-06-18 14:15 A | 24 | 100% |  |  |  |  | 21h | 21h | 3,150 | 3,150 |
| 33 | 1.4.1 | Divisão dos times de desenvolvimento |  | 0.5d | 2020-06-18 09:15 A | 2020-06-18 14:15 A | 24 | 100% |  |  |  | Breno | 4h | 4h | 600 | 600 |
| 34 | 1.4.2 | Definir linguagem/frameworks a serem utilizados |  | 0.5d | 2020-06-16 09:15 A | 2020-06-16 14:15 A | 24 | 100% |  |  | start no later than 2020-06-23 09:00 | Breno; Douglas | 8h | 8h | 1,200 | 1,200 |
| 35 | 1.4.3 | **Definir padrão de interface e usabilidade** |  | 1d | 2020-06-16 14:15 A | 2020-06-17 14:15 A |  | 100% |  |  |  |  | 8h | 8h | 1,200 | 1,200 |
| 36 | 1.4.3.1 | Montar Mockup de interface |  | 0.75d | 2020-06-16 14:15 A | 2020-06-17 11:15 A | 34 | 100% |  |  |  | Breno | 6h | 6h | 900 | 900 |
| 37 | 1.4.3.2 | Reunir-se com o cliente |  | 0.25d | 2020-06-17 11:15 A | 2020-06-17 14:15 A | 36 | 100% |  |  |  | Breno | 2h | 2h | 300 | 300 |
| 38 | 1.4.3.3 | Aprovar Interface | milestone | 0d | 2020-06-17 14:15 A | 2020-06-17 14:15 A | 37 | 100% |  |  |  | Cliente |  |  |  |  |
| 39 | 1.4.4 | Iniciar repositório para controle de versionamento |  | 0.12d | 2020-06-17 14:15 A | 2020-06-17 15:15 A | 38 | 100% |  |  |  | Breno | 1h | 1h | 150 | 150 |
| 40 | 1.5 | **Desenvolvimento** |  | 11.17d | 2020-06-18 14:15 A | 2020-07-03 15:35 | 32 | 64% | 4.03d | 0d |  |  | 233.33h | 130h | 35,000 | 19,500 |
| 41 | 1.5.1 | **Release 01** |  | 8.67d | 2020-06-18 14:15 A | 2020-07-01 10:35 |  | 72% | 2.41d | 0d |  |  | 180h | 130h | 27,000 | 19,500 |
| 42 | 1.5.1.1 | Inserir Livro |  | 1.25d | 2020-06-19 10:15 A | 2020-06-22 13:15 A | 32 | 100% |  |  |  | Breno | 10h | 10h | 1,500 | 1,500 |
| 43 | 1.5.1.2 | Alterar Livro |  | 0.75d | 2020-06-24 13:15 A | 2020-06-25 10:15 A | 42 | 100% |  |  |  | Breno | 6h | 6h | 900 | 900 |
| 44 | 1.5.1.3 | Consultar Livro |  | 0.62d | 2020-06-25 10:15 A | 2020-06-25 16:15 A | 42 | 100% |  |  |  | Breno | 5h | 5h | 750 | 750 |
| 45 | 1.5.1.4 | Remover Livro |  | 0.5d | 2020-06-22 13:15 A | 2020-06-22 17:15 A | 42 | 100% |  |  |  | Breno | 4h | 4h | 600 | 600 |
| 46 | 1.5.1.5 | Inserir Usuário |  | 1.25d | 2020-06-18 14:15 A | 2020-06-19 16:15 A | 32 | 100% |  |  |  | Douglas | 10h | 10h | 1,500 | 1,500 |
| 47 | 1.5.1.6 | Alterar Usuário |  | 0.62d | 2020-06-22 17:15 A | 2020-06-23 14:15 A | 45 | 100% |  |  |  | Douglas | 5h | 5h | 750 | 750 |
| 48 | 1.5.1.7 | Consultar Usuário |  | 0.62d | 2020-06-24 11:15 A | 2020-06-24 17:15 A | 47 | 100% |  |  |  | Douglas | 5h | 5h | 750 | 750 |
| 49 | 1.5.1.8 | Remover Usuário |  | 0.5d | 2020-06-24 17:15 A | 2020-06-25 13:15 A | 47 | 100% |  |  |  | Douglas | 4h | 4h | 600 | 600 |
| 50 | 1.5.1.9 | Teste Inserção Livro |  | 0.25d | 2020-06-29 09:15 A | 2020-06-29 11:15 A | 42 | 100% |  |  |  | Lucas | 2h | 2h | 300 | 300 |
| 51 | 1.5.1.10 | Teste Alteração Livro |  | 0.25d | 2020-06-30 11:15 A | 2020-06-30 17:35 A | 43 | 100% |  |  |  | Lucas | 2h | 2h | 300 | 300 |
| 52 | 1.5.1.11 | Teste Consulta Livro |  | 0.25d | 2020-06-29 14:15 A | 2020-06-30 11:15 A | 44 | 100% |  |  |  | Lucas | 2h | 2h | 300 | 300 |
| 53 | 1.5.1.12 | Teste Remoção Livro |  | 0.25d | 2020-06-29 11:15 A | 2020-06-29 14:15 A | 45 | 100% |  |  |  | Lucas | 2h | 2h | 300 | 300 |
| 54 | 1.5.1.13 | Teste Inserção Usuário |  | 0.25d | 2020-06-25 16:15 A | 2020-06-26 11:15 A | 46 | 100% |  |  |  | Breno | 2h | 2h | 300 | 300 |
| 55 | 1.5.1.14 | Teste Alteração Usuário |  | 0.25d | 2020-06-26 17:15 A | 2020-06-29 13:15 A | 47 | 100% |  |  |  | Breno | 2h | 2h | 300 | 300 |
| 56 | 1.5.1.15 | Teste Consulta Usuário |  | 0.25d | 2020-06-29 17:15 A | 2020-06-30 10:15 A | 48 | 100% |  |  |  | Breno | 2h | 2h | 300 | 300 |
| 57 | 1.5.1.16 | Teste Remoção Usuário |  | 0.25d | 2020-06-30 10:15 A | 2020-06-30 13:15 A | 49 | 100% |  |  |  | Breno | 2h | 2h | 300 | 300 |

| ID | WBS | Task | Type | Duration | Start | Finish | Predecessors | Complete | Remaining | Total slack | Free slack | Constraint | Resources | Work | Actual work | Cost | Actual cost |
| --- | --- | --- | --- | --- | --- | --- | --- | --- | --- | --- | --- | --- | --- | --- | --- | --- | --- |
| 58 | 1.5.1.17 | **Release 02** |  | 8.67d | 2020-06-18 14:15 A | 2020-07-01 10:35 |  | 73% | 2.34d | 0d |  |  |  | 89h | 65h | 13,350 | 9,750 |
| 59 | 1.5.1.17.1 | Inserir Cliente |  | 1.25d | 2020-06-18 14:15 A | 2020-06-19 16:15 A | 32 | 100% |  |  |  |  | Lucas | 10h | 10h | 1,500 | 1,500 |
| 60 | 1.5.1.17.2 | Alterar Cliente |  | 0.75d | 2020-06-19 16:15 A | 2020-06-24 10:15 A | 59 | 100% |  |  |  |  | Lucas | 6h | 6h | 900 | 900 |
| 61 | 1.5.1.17.3 | Consulta Cliente |  | 0.62d | 2020-06-24 10:15 A | 2020-06-24 16:15 A | 59 | 100% |  |  |  |  | Lucas | 5h | 5h | 750 | 750 |
| 62 | 1.5.1.17.4 | Remover Cliente |  | 0.5d | 2020-06-24 16:15 A | 2020-06-25 11:15 A | 59 | 100% |  |  |  |  | Lucas | 4h | 4h | 600 | 600 |
| 63 | 1.5.1.17.5 | Inserir Fornecedor |  | 1.25d | 2020-06-22 13:15 A | 2020-06-23 15:15 A | 42 | 100% |  |  |  |  | Lucas | 10h | 10h | 1,500 | 1,500 |
| 64 | 1.5.1.17.6 | Alterar Fornecedor |  | 0.62d | 2020-06-25 11:15 A | 2020-06-25 17:15 A | 63 | 100% |  |  |  |  | Lucas | 5h | 5h | 750 | 750 |
| 65 | 1.5.1.17.7 | Consultar Fornecedor |  | 0.62d | 2020-06-25 17:15 A | 2020-06-26 14:15 A | 63 | 100% |  |  |  |  | Lucas | 5h | 5h | 750 | 750 |
| 66 | 1.5.1.17.8 | Remover Fornecedor |  | 0.5d | 2020-06-26 14:15 A | 2020-06-29 09:15 A | 63 | 100% |  |  |  |  | Lucas | 4h | 4h | 600 | 600 |
| 67 | 1.5.1.17.9 | Emitir Relatório de Vendas |  | 1.5d | 2020-06-22 17:15 | 2020-06-24 13:15 | 59, 42 |  |  | 0d |  |  | Breno | 12h |  | 1,800 |  |
| 68 | 1.5.1.17.10 | Emitir Relatório de Estoque |  | 1d | 2020-06-22 15:15 | 2020-06-24 11:15 | 42 |  |  | 1.17d | 0d |  | Douglas | 8h |  | 1,200 |  |
| 69 | 1.5.1.17.11 | Teste Inserção Cliente |  | 0.25d | 2020-06-25 13:15 A | 2020-06-25 15:15 A | 59 | 100% |  |  |  |  | Douglas | 2h | 2h | 300 | 300 |
| 70 | 1.5.1.17.12 | Teste Alteração Cliente |  | 0.25d | 2020-06-26 10:15 A | 2020-06-26 13:15 A | 60 | 100% |  |  |  |  | Douglas | 2h | 2h | 300 | 300 |
| 71 | 1.5.1.17.13 | Teste Consulta Cliente |  | 0.25d | 2020-06-25 17:15 A | 2020-06-26 10:15 A | 61 | 100% |  |  |  |  | Douglas | 2h | 2h | 300 | 300 |
| 72 | 1.5.1.17.14 | Teste Remoção Cliente |  | 0.25d | 2020-06-25 15:15 A | 2020-06-25 17:15 A | 62 | 100% |  |  |  |  | Douglas | 2h | 2h | 300 | 300 |
| 73 | 1.5.1.17.15 | Teste Inserção Fornecedor |  | 0.25d | 2020-06-29 13:15 A | 2020-06-29 15:15 A | 63 | 100% |  |  |  |  | Breno | 2h | 2h | 300 | 300 |
| 74 | 1.5.1.17.16 | Teste Alteração Fornecedor |  | 0.25d | 2020-06-25 17:15 A | 2020-06-26 10:15 A | 64 | 100% |  |  |  |  | Breno | 2h | 2h | 300 | 300 |
| 75 | 1.5.1.17.17 | Teste Consulta Fornecedor |  | 0.25d | 2020-06-26 14:15 A | 2020-06-26 16:15 A | 65 | 100% |  |  |  |  | Breno | 2h | 2h | 300 | 300 |
| 76 | 1.5.1.17.18 | Teste Remoção Fornecedor |  | 0.25d | 2020-06-29 09:15 A | 2020-06-29 11:15 A | 66 | 100% |  |  |  |  | Breno | 2h | 2h | 300 | 300 |
| 77 | 1.5.1.17.19 | Teste Emissão Relatório de Vendas |  | 0.25d | 2020-06-30 17:35 | 2020-07-01 10:35 | 67 |  |  | 0d |  |  | Lucas | 2h |  | 300 |  |
| 78 | 1.5.1.17.20 | Teste Emisão Relatório de Estoque |  | 0.25d | 2020-06-29 15:15 | 2020-06-29 17:15 | 68 |  |  | 1.29d |  |  | Breno | 2h |  | 300 |  |
| 79 | 1.5.1.18 | **Release 03** |  | 6.72d | 2020-06-19 16:15 | 2020-06-30 14:00 |  |  |  | 0.7d | 0d |  |  | 26h |  | 3,900 |  |
| 80 | 1.5.1.18.1 | Tempo de Sessão |  | 0.88d | 2020-06-19 16:15 | 2020-06-22 15:15 | 59, 46 |  |  | 5.2d | 4.38d |  | Douglas | 7h |  | 1,050 |  |
| 81 | 1.5.1.18.2 | Log do Sistema |  | 0.62d | 2020-06-29 09:15 | 2020-06-29 15:15 | 80, 59, 60, 61, 62, 63, 64, 65, 66, 67, 68, 82, 42, 43, 44, 45, 48, 49, 46, 47 |  |  | 1.04d | 0d |  | Douglas | 5h |  | 750 |  |
| 82 | 1.5.1.18.3 | Envio de notícias |  | 0.38d | 2020-06-23 15:15 | 2020-06-24 09:15 | 59 |  |  | 2.97d | 0d |  | Lucas | 3h |  | 450 |  |
| 83 | 1.5.1.18.4 | Teste Tempo de sessão |  | 0.5d | 2020-06-29 10:15 | 2020-06-30 14:00 | 80 |  |  | 0.7d |  | finish no earlier than 2020-06-30 14:00 | Douglas | 4h |  | 600 |  |
| 84 | 1.5.1.18.5 | Teste Log do Sistema |  | 0.5d | 2020-06-29 15:15 | 2020-06-30 10:15 | 81 |  |  | 1.04d |  |  | Lucas | 4h |  | 600 |  |
| 85 | 1.5.1.18.6 | Teste Envio de notícias |  | 0.38d | 2020-06-26 11:15 | 2020-06-26 17:15 | 82 |  |  | 2.29d |  |  | Breno | 3h |  | 450 |  |
| 86 | 1.5.2 | Avaliação do cliente | milestone | 0d | 2020-06-30 14:00 | 2020-06-30 14:00 | 79 |  |  | 2.78d | 0d |  | Cliente |  |  |  |  |
| 87 | 1.5.3 | Redigir relatório de não-conformidade |  | 0.42d | 2020-06-30 14:00 | 2020-06-30 17:20 | 86 |  |  | 2.78d |  |  | Breno; Lucas; Douglas | 10h |  | 1,500 |  |

| ID | WBS | Task | Duration | Start | Finish | Predecessors | Total slack | Free slack | Constraint | Resources | Work | Cost |
| --- | --- | --- | --- | --- | --- | --- | --- | --- | --- | --- | --- | --- |
| 88 | 1.5.4 | **Ajustes de Projeto** | 2.5d | 2020-07-01 10:35 | 2020-07-03 15:35 |  | 0d |  |  |  | 43.33h | 6,500 |
| 89 | 1.5.4.1 | **Implementação** | 2.08d | 2020-07-01 10:35 | 2020-07-03 11:15 |  | 0d |  |  |  | 33.33h | 5,000 |
| 90 | 1.5.4.1.1 | Correção de bugs de acordo com o relatório de não conformidade da Release 01 | 2.08d | 2020-07-01 10:35 | 2020-07-03 11:15 | 41 | 0d |  |  | Lucas; Douglas | 33.33h | 5,000 |
| 91 | 1.5.4.2 | **Teste** | 0.42d | 2020-07-03 11:15 | 2020-07-03 15:35 |  | 0d |  |  |  | 10h | 1,500 |
| 92 | 1.5.4.2.1 | Validação da correção dos bugs | 0.42d | 2020-07-03 11:15 | 2020-07-03 15:35 | 90 | 0d |  |  | Breno; Lucas; Douglas | 10h | 1,500 |
| 93 | 1.6 | **Monitoramento e controle** | 3.12d | 2020-06-16 09:15 | 2020-06-19 10:15 | 2, 15, 24 | 4.54d | 0d |  |  | 28h | 4,200 |
| 94 | 1.6.1 | Acompanhamento do projeto | 0.75d | 2020-06-16 09:15 | 2020-06-18 09:15 |  | 4.97d |  | start no later than 2020-06-23 09:00 | Breno; Douglas | 6h | 900 |
| 95 | 1.6.2 | Atualizações de bibliotecas utilizadas e protocolos | 0.88d | 2020-06-16 09:15 | 2020-06-16 17:15 |  | 6.79d |  |  | Lucas | 7h | 1,050 |
| 96 | 1.6.3 | Elucidar requisitos demandados pelo cliente em relases | 0.62d | 2020-06-18 14:15 | 2020-06-19 10:15 |  | 4.54d |  |  | Breno | 5h | 750 |
| 97 | 1.6.4 | Refatoração de código | 1.25d | 2020-06-16 17:15 | 2020-06-18 10:15 |  | 5.54d |  |  | Douglas | 10h | 1,500 |
| 98 | 1.7 | Fechamento | 2d | 2020-06-19 10:15 | 2020-06-23 10:15 | 93 | 4.54d | 0d |  |  | 10h |  |
| 99 | 1.8 | Controle de mudanças | 4d | 2020-06-23 10:15 | 2020-06-29 10:15 | 98 | 4.54d |  |  |  | 20h |  |
